# Proyecto SistDist v1.0

Schedule from MS Project, 2006-09-05 to 2008-04-10, 3 hours a day.
Telecom

## Calendars

- Standard: Mon-Fri 08:00-12:00, 13:00-17:00; Sat-Sun off. Exceptions (off unless hours are given): 2006-12-01 to 2007-02-28.

## Resources

| Resource |
| --- |
| Lider de Proyecto |
| Analista A |
| Analista B |
| Analista C |
| Cliente |
| Responsable de Validaciones |
| Diseñador A |
| Diseñador C |
| Diseñador B |
| Programador A |
| Programador B |
| Tester A |
| Tester B |
| Documentador A |
| Documentador B |

## Schedule

| ID | WBS | Task | Duration | Start | Finish | Predecessors | Total slack | Free slack | Constraint | Resources | Work |
| --- | --- | --- | --- | --- | --- | --- | --- | --- | --- | --- | --- |
| 1 | 1 | **Proyecto SistDist** | 941.33d? | 2006-09-05 | 2008-04-10 |  | 0d |  |  |  | 2344h |
| 2 | 1.1 | **Análisis** | 83.33d? | 2006-09-05 | 2006-10-18 |  | 164.67d |  |  |  | 664h |
| 3 | 1.1.1 | Armado de Plan de Proyecto | 11.67d? | 2006-09-05 | 2006-09-11 |  | 164.67d | 0d |  | Lider de Proyecto; Analista A; Analista B; Analista C | 140h |
| 4 | 1.1.2 | Hito 1 : Aceptacion del Plan de Proyecto | 1d? | 2006-09-12 | 2006-09-12 | 3 | 164.67d | 0d |  | Cliente | 3h |
| 5 | 1.1.3 | **Confección de la especificación de Requisitos de Software** | 17.33d? | 2006-09-12 | 2006-09-20 |  | 164.67d | 0d |  |  | 112h |
| 6 | 1.1.3.1 | Relevamiento | 4d? | 2006-09-12 | 2006-09-13 | 4 | 164.67d | 0d |  | Analista A; Lider de Proyecto | 24h |
| 7 | 1.1.3.2 | Gestión de proveedores | 3.33d? | 2006-09-13 | 2006-09-15 | 6 | 171.33d | 0d |  | Analista A | 10h |
| 8 | 1.1.3.3 | Gestión de clientes | 3.33d? | 2006-09-15 | 2006-09-18 | 7 | 171.33d |  |  | Analista A | 10h |
| 9 | 1.1.3.4 | Gestión de stock | 6.67d? | 2006-09-13 | 2006-09-18 | 6 | 171.33d |  |  | Analista C | 20h |
| 10 | 1.1.3.5 | Gestión de pedidos | 6.67d? | 2006-09-13 | 2006-09-18 | 6 | 164.67d | 0d |  | Analista B | 20h |
| 11 | 1.1.3.6 | Gestion de productos | 6.67d? | 2006-09-18 | 2006-09-20 | 10 | 164.67d |  |  | Analista B | 20h |
| 12 | 1.1.3.7 | Seguridad | 2.67d? | 2006-09-13 | 2006-09-14 | 6 | 175.33d |  |  | Lider de Proyecto | 8h |
| 13 | 1.1.4 | Informe de Avance | 0.25d? | 2006-09-20 | 2006-09-20 |  | 273.08d |  | start no earlier than 2006-09-20 | Lider de Proyecto; Analista B; Analista C; Analista A | 3h |
| 14 | 1.1.5 | Revision de Especificacion | 1.33d? | 2006-09-20 | 2006-09-21 | 5 | 164.67d | 0d |  | Responsable de Validaciones | 4h |
| 15 | 1.1.6 | Aprobacion Especificación Requerimientos | 1.33d? | 2006-09-21 | 2006-09-21 | 14 | 270d |  |  | Lider de Proyecto | 4h |
| 16 | 1.1.7 | **Elaboración del Diagrama de Actores** | 6d? | 2006-09-21 | 2006-09-25 |  | 164.67d | 0d |  |  | 38h |
| 17 | 1.1.7.1 | Gestión de stock | 2.67d? | 2006-09-21 | 2006-09-22 | 14 | 185.33d | 0d |  | Analista C | 8h |
| 18 | 1.1.7.2 | Gestión de pedidos | 2.67d? | 2006-09-21 | 2006-09-22 | 14 | 164.67d | 0d |  | Analista B | 8h |
| 19 | 1.1.7.3 | Gestion de productos | 2.67d? | 2006-09-22 | 2006-09-25 | 18 | 164.67d | 0d |  | Analista B | 8h |
| 20 | 1.1.7.4 | Gestión de proveedores | 1.33d? | 2006-09-21 | 2006-09-21 | 14 | 184.67d | 0d |  | Analista A | 4h |
| 21 | 1.1.7.5 | Gestión de clientes | 1.33d? | 2006-09-22 | 2006-09-22 | 17 | 185.33d | 0d |  | Analista C | 4h |
| 22 | 1.1.7.6 | Seguridad | 2d? | 2006-09-22 | 2006-09-25 | 21 | 185.33d | 0d |  | Analista C | 6h |
| 23 | 1.1.8 | Revisión de Diagramas de Actores | 2d? | 2006-09-25 | 2006-09-26 | 16 | 262d | 0d |  | Responsable de Validaciones | 6h |
| 24 | 1.1.9 | Aprobacion de Diagramas de Actores | 1.33d? | 2006-09-26 | 2006-09-26 | 23 | 262d |  |  | Lider de Proyecto | 4h |
| 25 | 1.1.10 | Hito 2 | 1.33d? | 2006-09-28 | 2006-09-29 |  | 256d |  | start no earlier than 2006-09-28 | Cliente | 4h |

| ID | WBS | Task | Duration | Start | Finish | Predecessors | Total slack | Free slack | Constraint | Resources | Work |
| --- | --- | --- | --- | --- | --- | --- | --- | --- | --- | --- | --- |
| 26 | 1.1.11 | **Confección de Diagramas de Casos de Uso Y Especificación** | 30.67d? | 2006-09-21 | 2006-10-09 |  | 168.67d | 0d |  |  | 184h |
| 27 | 1.1.11.1 | Gestión de proveedores | 8d? | 2006-09-21 | 2006-09-26 | 20 | 184.67d | 0d |  | Analista A | 24h |
| 28 | 1.1.11.2 | Gestión de clientes | 8d? | 2006-09-26 | 2006-09-29 | 27 | 184.67d | 0d |  | Analista A | 24h |
| 29 | 1.1.11.3 | Gestión de stock | 13.33d? | 2006-09-25 | 2006-10-02 | 22 | 185.33d | 0d |  | Analista C | 40h |
| 30 | 1.1.11.4 | Gestión de pedidos | 13.33d? | 2006-09-25 | 2006-10-02 | 19 | 164.67d | 0d |  | Analista B | 40h |
| 31 | 1.1.11.5 | Gestión de productos | 13.33d? | 2006-10-02 | 2006-10-09 | 30 | 164.67d | 0d |  | Analista B | 40h |
| 32 | 1.1.11.6 | Seguridad | 5.33d? | 2006-09-25 | 2006-09-27 | 22 | 198.67d | 10d |  | Lider de Proyecto | 16h |
| 33 | 1.1.12 | Informe de Avance | 1d? | 2006-10-02 | 2006-10-02 |  | 188.67d | 0d | start no earlier than 2006-10-02 | Lider de Proyecto; Analista B; Analista C; Analista A | 12h |
| 34 | 1.1.13 | Seguimiento de productividad | 1d? | 2006-10-03 | 2006-10-03 | 33 | 188.67d | 0d |  | Lider de Proyecto [66.7%] | 2h |
| 35 | 1.1.14 | Revisión de Casos de Uso | 2.67d? | 2006-10-09 | 2006-10-10 | 26 | 235.33d | 0d |  | Responsable de Validaciones | 8h |
| 36 | 1.1.15 | Aprobacion Casos de Uso y Especificacion | 1.33d? | 2006-10-10 | 2006-10-10 | 35 | 235.33d |  |  | Lider de Proyecto | 4h |
| 37 | 1.1.16 | **Confección de Diagramas de Interfaz** | 22.67d? | 2006-09-29 | 2006-10-12 |  | 171.33d | 0d |  |  | 56h |
| 38 | 1.1.16.1 | Gestión de proveedores | 2.67d? | 2006-09-29 | 2006-10-02 | 28 | 184.67d | 0d |  | Analista A | 8h |
| 39 | 1.1.16.2 | Gestión de clientes | 2.67d? | 2006-10-02 | 2006-10-03 | 38 | 184.67d | 0d |  | Analista A | 8h |
| 40 | 1.1.16.3 | Gestión de stock | 4d? | 2006-10-02 | 2006-10-04 | 29 | 185.33d | 0d |  | Analista C | 12h |
| 41 | 1.1.16.4 | Gestión de pedidos | 4d? | 2006-10-09 | 2006-10-10 | 31 | 164.67d | 0d |  | Analista B | 12h |
| 42 | 1.1.16.5 | Gestión de productos | 4d? | 2006-10-10 | 2006-10-12 | 41 | 164.67d | 0d |  | Analista B | 12h |
| 43 | 1.1.16.6 | Seguridad | 1.33d? | 2006-10-03 | 2006-10-03 | 32, 34 | 188.67d | 0d |  | Lider de Proyecto | 4h |
| 44 | 1.1.17 | Revision Diagramas de Interfaz | 2.67d? | 2006-10-12 | 2006-10-13 | 37 | 227.33d | 0d |  | Responsable de Validaciones | 8h |
| 45 | 1.1.18 | Aprobacion Diagramas de Interfaz | 1.33d? | 2006-10-13 | 2006-10-13 | 44 | 227.33d |  |  | Lider de Proyecto | 4h |
| 46 | 1.1.19 | **Confección de Diagramas de Colaboracion** | 25.33d? | 2006-10-03 | 2006-10-17 |  | 164.67d | 0d |  |  | 56h |
| 47 | 1.1.19.1 | Gestión de proveedores | 2.67d? | 2006-10-03 | 2006-10-04 | 39 | 184.67d | 0d |  | Analista A | 8h |
| 48 | 1.1.19.2 | Gestión de clientes | 2.67d? | 2006-10-04 | 2006-10-05 | 47 | 184.67d |  |  | Analista A | 8h |
| 49 | 1.1.19.3 | Gestión de stock | 4d? | 2006-10-04 | 2006-10-05 | 40 | 185.33d |  |  | Analista C | 12h |
| 50 | 1.1.19.4 | Gestión de pedidos | 4d? | 2006-10-12 | 2006-10-13 | 42, 41 | 164.67d | 0d |  | Analista B | 12h |
| 51 | 1.1.19.5 | Gestión de productos | 4d? | 2006-10-13 | 2006-10-17 | 50 | 164.67d |  |  | Analista B | 12h |
| 52 | 1.1.19.6 | Seguridad | 1.33d? | 2006-10-03 | 2006-10-04 | 43 | 188.67d |  |  | Lider de Proyecto | 4h |
| 53 | 1.1.20 | Revision Diagramas de Colaboración | 2.67d? | 2006-10-17 | 2006-10-18 | 46 | 164.67d | 0d |  | Responsable de Validaciones | 8h |
| 54 | 1.1.21 | Aprobacion Diagramas de Colaboración | 1.33d? | 2006-10-18 | 2006-10-18 | 53 | 219.33d |  |  | Lider de Proyecto | 4h |

| ID | WBS | Task | Duration | Start | Finish | Predecessors | Total slack | Free slack | Constraint | Resources | Work |
| --- | --- | --- | --- | --- | --- | --- | --- | --- | --- | --- | --- |
| 55 | 1.2 | **Diseño** | 73.33d? | 2006-10-18 | 2006-11-24 |  | 62d |  |  |  | 512h |
| 56 | 1.2.1 | **Confección de Diagramas de Secuencia** | 5.33d? | 2006-10-18 | 2006-10-20 |  | 164.67d | 0d |  |  | 72h |
| 57 | 1.2.1.1 | Gestión de proveedores | 1.33d? | 2006-10-18 | 2006-10-18 | 53 | 167.33d | 0d |  | Diseñador A; Analista A | 8h |
| 58 | 1.2.1.2 | Gestión de clientes | 1.33d? | 2006-10-18 | 2006-10-19 | 57 | 167.33d | 6.67d |  | Diseñador A; Analista A | 8h |
| 59 | 1.2.1.3 | Gestión de stock | 2.67d? | 2006-10-18 | 2006-10-19 | 53 | 164.67d | 0d |  | Diseñador C; Analista A | 16h |
| 60 | 1.2.1.4 | Gestión de pedidos | 2.67d? | 2006-10-18 | 2006-10-19 | 53 | 166d | 0d |  | Diseñador B; Analista A | 16h |
| 61 | 1.2.1.5 | Gestión de productos | 1.33d? | 2006-10-19 | 2006-10-19 | 60 | 166d | 5.33d |  | Diseñador B; Analista A | 8h |
| 62 | 1.2.1.6 | Seguridad | 2.67d? | 2006-10-19 | 2006-10-20 | 59 | 164.67d | 0d |  | Diseñador C; Analista A | 16h |
| 63 | 1.2.2 | Revision Diagramas de Secuencia | 2.67d? | 2006-10-20 | 2006-10-23 | 56 | 164.67d | 0d |  | Responsable de Validaciones | 8h |
| 64 | 1.2.3 | Aprobacion Diagramas de Secuencia | 1.33d? | 2006-10-23 | 2006-10-23 | 63 | 164.67d | 0d |  | Lider de Proyecto | 4h |
| 65 | 1.2.4 | Informe de Avance | 0.67d? | 2006-10-20 | 2006-10-20 |  | 213d | 0d | start no earlier than 2006-10-20 | Diseñador A; Diseñador B; Lider de Proyecto; Diseñador C; Analista A | 10h |
| 66 | 1.2.5 | Hito 3 | 1d? | 2006-10-24 | 2006-10-24 |  | 208.33d |  | start no earlier than 2006-10-24 | Lider de Proyecto | 3h |
| 67 | 1.2.6 | Seguimiento de productividad | 1d? | 2006-10-20 | 2006-10-23 | 65 | 213d |  |  | Lider de Proyecto [66.7%] | 2h |
| 68 | 1.2.7 | **Confección de Diagramas de Clases** | 9.33d? | 2006-10-20 | 2006-10-25 |  | 164.67d | 0d |  |  | 72h |
| 69 | 1.2.7.1 | Gestión de proveedores | 1.33d? | 2006-10-23 | 2006-10-24 | 58, 64 | 167.33d | 0d |  | Diseñador A; Analista A | 8h |
| 70 | 1.2.7.2 | Gestión de clientes | 1.33d? | 2006-10-24 | 2006-10-24 | 69 | 167.33d | 5.33d |  | Diseñador A; Analista A | 8h |
| 71 | 1.2.7.3 | Gestión de stock | 2.67d? | 2006-10-23 | 2006-10-24 | 62, 64 | 167.33d |  |  | Diseñador C; Analista A | 16h |
| 72 | 1.2.7.4 | Gestión de pedidos | 2.67d? | 2006-10-23 | 2006-10-24 | 61, 64 | 164.67d | 0d |  | Diseñador B; Analista A | 16h |
| 73 | 1.2.7.5 | Gestion de productos | 2.67d? | 2006-10-24 | 2006-10-25 | 72 | 164.67d | 9.33d |  | Diseñador B; Analista A | 16h |
| 74 | 1.2.7.6 | Seguridad | 2.67d? | 2006-10-20 | 2006-10-23 | 62 | 171.33d |  |  | Lider de Proyecto | 8h |
| 75 | 1.2.8 | Revision Diagramas de Clases | 2.67d? | 2006-10-25 | 2006-10-26 | 68 | 164.67d | 0d |  | Responsable de Validaciones | 8h |
| 76 | 1.2.9 | Aprobacion Diagrama de Clases | 1.33d? | 2006-10-26 | 2006-10-27 | 75 | 202d |  |  | Lider de Proyecto | 4h |
| 77 | 1.2.10 | Confección de Diagrama de Entidad/Relacion | 6.67d? | 2006-10-26 | 2006-10-31 | 75, 70 | 164.67d | 0d |  | Analista A; Diseñador A | 40h |
| 78 | 1.2.11 | Revision Diagrama de Entidad/Relacion | 2.67d? | 2006-10-31 | 2006-11-01 | 77 | 192.67d | 0d |  | Responsable de Validaciones | 8h |
| 79 | 1.2.12 | Aprobacion Diagrama de Entidad/Relacion | 1.33d? | 2006-11-01 | 2006-11-01 | 78 | 192.67d |  |  | Lider de Proyecto | 4h |
| 80 | 1.2.13 | Confección de Diagramas de Despliegue | 6.67d? | 2006-10-31 | 2006-11-02 | 77, 73 | 164.67d | 0d |  | Analista A; Diseñador B | 40h |
| 81 | 1.2.14 | Revision Diagramas de Despliegue | 2.67d? | 2006-11-02 | 2006-11-03 | 80 | 164.67d | 0d |  | Responsable de Validaciones | 8h |
| 82 | 1.2.15 | Aprobacion Diagramas de Despliegue | 1.33d? | 2006-11-03 | 2006-11-06 | 81 | 164.67d | 0d |  | Lider de Proyecto | 4h |
| 83 | 1.2.16 | Informe de Avance | 1d? | 2006-11-10 | 2006-11-10 |  | 172.67d | 0d | start no earlier than 2006-11-10 | Lider de Proyecto; Diseñador B; Diseñador A; Diseñador C; Analista A | 15h |
| 84 | 1.2.17 | Seguimiento de productividad | 1d? | 2006-11-13 | 2006-11-13 | 83 | 172.67d |  |  | Lider de Proyecto [66.7%] | 2h |
| 85 | 1.2.18 | Confección de Diagrama de Estados | 6.67d? | 2006-11-06 | 2006-11-08 | 82 | 164.67d | 0d |  | Analista A; Diseñador C | 40h |
| 86 | 1.2.19 | Revision Diagramas de Estados | 2.67d? | 2006-11-08 | 2006-11-09 | 85 | 164.67d | 0d |  | Responsable de Validaciones | 8h |
| 87 | 1.2.20 | Aprobacion Diagrama de Estados | 1.33d? | 2006-11-09 | 2006-11-10 | 86 | 164.67d | 0d |  | Lider de Proyecto | 4h |
| 88 | 1.2.21 | Establecimiento de Arquitectura | 6.67d? | 2006-11-10 | 2006-11-14 | 87 | 164.67d | 0d |  | Lider de Proyecto | 20h |
| 89 | 1.2.22 | Revision Diagramas de Arquitectura | 2.67d? | 2006-11-14 | 2006-11-15 | 88 | 164.67d | 0d |  | Responsable de Validaciones | 8h |
| 90 | 1.2.23 | Aprobacion Arquitectura | 1.33d? | 2006-11-15 | 2006-11-16 | 89 | 164.67d |  |  | Lider de Proyecto | 4h |
| 91 | 1.2.24 | Hito 4 | 1.33d? | 2006-11-20 | 2006-11-21 |  | 817d | 0d | start no earlier than 2006-11-20 | Lider de Proyecto | 4h |
| 92 | 1.2.25 | Revision General | 10d? | 2006-11-21 | 2006-11-24 | 91 | 817d | 0d |  | Lider de Proyecto; Diseñador A; Diseñador B; Diseñador C | 120h |

| ID | WBS | Task | Duration | Start | Finish | Predecessors | Total slack | Free slack | Constraint | Resources | Work |
| --- | --- | --- | --- | --- | --- | --- | --- | --- | --- | --- | --- |
| 93 | 1.3 | **Construcción** | 629d? | 2006-11-24 | 2008-01-18 |  | 157d |  |  |  | 412h |
| 94 | 1.3.1 | **Confección de Código Fuente y Ejecutable** | 23.33d? | 2006-11-24 | 2007-03-07 |  | 817d |  |  |  | 250h |
| 95 | 1.3.1.1 | Gestión de proveedores | 5d? | 2006-11-24 | 2006-11-28 | 92 | 823.33d | 0d |  | Programador A; Diseñador A | 30h |
| 96 | 1.3.1.2 | Gestión de clientes | 5d? | 2006-11-28 | 2006-11-30 | 95 | 823.33d | 0d |  | Programador A; Diseñador A | 30h |
| 97 | 1.3.1.3 | Gestión de stock | 8.33d? | 2006-11-30 | 2007-03-05 | 96 | 823.33d | 0d |  | Programador A; Diseñador A | 50h |
| 98 | 1.3.1.4 | Gestión de pedidos | 8.33d? | 2006-11-24 | 2006-11-29 | 92 | 107.33d | 0d |  | Programador B; Diseñador A | 50h |
| 99 | 1.3.1.5 | Gestion de productos | 8.33d? | 2006-11-30 | 2007-03-05 | 98 | 107.33d | 0d |  | Programador B; Diseñador A | 50h |
| 100 | 1.3.1.6 | Seguridad | 6.67d? | 2007-03-05 | 2007-03-07 | 99 | 107.33d | 0d |  | Programador B; Diseñador A | 40h |
| 101 | 1.3.2 | **Confeccion Casos de Pruebas Unitarias** | 11d? | 2007-03-05 | 2007-03-09 |  | 817d |  |  |  | 64h |
| 102 | 1.3.2.1 | Gestión de proveedores | 1.33d? | 2007-03-05 | 2007-03-06 | 97 | 823.33d | 0d |  | Programador A; Diseñador A | 8h |
| 103 | 1.3.2.2 | Gestión de clientes | 1.33d? | 2007-03-06 | 2007-03-06 | 102 | 823.33d | 0d |  | Programador A; Diseñador A | 8h |
| 104 | 1.3.2.3 | Gestión de stock | 2d? | 2007-03-06 | 2007-03-07 | 103 | 823.33d |  |  | Programador A; Diseñador A | 12h |
| 105 | 1.3.2.4 | Gestión de pedidos | 2d? | 2007-03-07 | 2007-03-08 | 100 | 107.33d | 0d |  | Programador B; Diseñador A | 12h |
| 106 | 1.3.2.5 | Gestion de productos | 2d? | 2007-03-08 | 2007-03-09 | 105 | 107.33d | 0d |  | Programador B; Diseñador A | 12h |
| 107 | 1.3.2.6 | Seguridad | 2d? | 2007-03-09 | 2007-03-09 | 106 | 107.33d | 0d |  | Programador B; Diseñador A | 12h |
| 108 | 1.3.3 | **Ejecución de Pruebas Unitarias** | 29.67d? | 2008-01-02 | 2008-01-17 |  | 79.33d | 0d |  |  | 82h |
| 109 | 1.3.3.1 | Gestión de proveedores | 1.33d? | 2008-01-15 | 2008-01-16 |  | 55.33d | 0d | start no earlier than 2008-01-15 | Programador A; Diseñador A | 8h |
| 110 | 1.3.3.2 | Gestión de clientes | 1.33d? | 2008-01-16 | 2008-01-16 | 109 | 55.33d | 0d |  | Programador A; Diseñador A | 8h |
| 111 | 1.3.3.3 | Gestión de stock | 3d? | 2008-01-16 | 2008-01-17 | 110 | 150d | 0d |  | Programador A; Diseñador A | 18h |
| 112 | 1.3.3.4 | Gestión de pedidos | 3d? | 2008-01-02 | 2008-01-03 |  | 178.67d | 0d | start no earlier than 2008-01-02 | Programador B; Diseñador A | 18h |
| 113 | 1.3.3.5 | Gestion de productos | 3d? | 2008-01-03 | 2008-01-04 | 112 | 178.67d | 0d |  | Programador B; Diseñador A | 18h |
| 114 | 1.3.3.6 | Seguridad | 2d? | 2008-01-04 | 2008-01-07 | 113 | 178.67d |  |  | Programador B; Diseñador A | 12h |
| 115 | 1.3.4 | Revisión de Pruebas | 1.33d? | 2008-01-17 | 2008-01-18 | 108 | 157d | 0d |  | Diseñador A; Programador A; Programador B | 12h |
| 116 | 1.3.5 | Aprobacion de Pruebas | 1.33d? | 2008-01-18 | 2008-01-18 | 115 | 157d |  |  | Diseñador A | 4h |

| ID | WBS | Task | Duration | Start | Finish | Predecessors | Total slack | Free slack | Constraint | Resources | Work |
| --- | --- | --- | --- | --- | --- | --- | --- | --- | --- | --- | --- |
| 117 | 1.4 | **Testing** | 143.67d? | 2008-01-16 | 2008-03-31 |  | 20.33d |  |  |  | 364h |
| 118 | 1.4.1 | **Confección de Documentación de los casos de prueba Integración** | 11d? | 2008-01-16 | 2008-01-22 |  | 56.67d | 0d |  |  | 104h |
| 119 | 1.4.1.1 | Gestión de proveedores | 2d? | 2008-01-16 | 2008-01-16 | 109 | 159d |  |  | Tester A; Analista A | 12h |
| 120 | 1.4.1.2 | Gestión de clientes | 2d? | 2008-01-16 | 2008-01-17 | 110 | 55.33d | 0d |  | Tester B; Analista A | 12h |
| 121 | 1.4.1.3 | Gestión de stock | 3.33d? | 2008-01-17 | 2008-01-18 | 111 | 150d | 0d |  | Tester A; Analista A | 20h |
| 122 | 1.4.1.4 | Gestión de pedidos | 3.33d? | 2008-01-17 | 2008-01-18 | 120 | 55.33d | 0d |  | Tester B; Analista A | 20h |
| 123 | 1.4.1.5 | Gestión de productos | 3.33d? | 2008-01-21 | 2008-01-22 | 121 | 150d |  |  | Tester A; Analista A | 20h |
| 124 | 1.4.1.6 | Seguridad | 3.33d? | 2008-01-18 | 2008-01-21 | 122 | 55.33d | 0d |  | Tester B; Analista A | 20h |
| 125 | 1.4.2 | Revision Documentos de Casos de Prueba Integración | 1.67d? | 2008-01-22 | 2008-01-22 | 118 | 150d | 0d |  | Responsable de Validaciones; Analista A | 10h |
| 126 | 1.4.3 | Aprobacion Documentación Casos de Pruebas Integración | 1.33d? | 2008-01-22 | 2008-01-23 | 125 | 150d |  |  | Lider de Proyecto | 4h |
| 127 | 1.4.4 | **Ejecución Pruebas Integración** | 44.67d? | 2008-01-21 | 2008-02-13 |  | 55.33d | 0d |  |  | 208h |
| 128 | 1.4.4.1 | Gestión de proveedores | 8d? | 2008-01-25 | 2008-01-30 |  | 106.67d | 0d | start no earlier than 2008-01-25 | Tester A | 24h |
| 129 | 1.4.4.2 | Gestión de clientes | 8d? | 2008-01-21 | 2008-01-24 | 124 | 55.33d | 0d |  | Tester B | 24h |
| 130 | 1.4.4.3 | Gestión de stock | 13.33d? | 2008-01-30 | 2008-02-06 | 128 | 106.67d | 0d |  | Tester A | 40h |
| 131 | 1.4.4.4 | Gestión de pedidos | 13.33d? | 2008-01-25 | 2008-02-01 |  | 114.67d | 0d | start no earlier than 2008-01-25 | Tester B | 40h |
| 132 | 1.4.4.5 | Gestión de productos | 13.33d? | 2008-02-06 | 2008-02-13 | 130 | 106.67d |  |  | Tester A | 40h |
| 133 | 1.4.4.6 | Seguridad | 13.33d? | 2008-02-01 | 2008-02-08 | 131 | 114.67d |  |  | Tester B | 40h |
| 134 | 1.4.5 | Revisión Resultados de Pruebas | 1.33d? | 2008-02-13 | 2008-02-14 | 127 | 106.67d | 0d |  | Responsable de Validaciones; Analista A; Tester A; Tester B | 16h |
| 135 | 1.4.6 | Aprobacion Resultados Pruebas Integración | 1.33d? | 2008-02-14 | 2008-02-14 | 134 | 106.67d |  |  | Lider de Proyecto | 4h |
| 136 | 1.4.7 | Informe de Avance | 1d? | 2008-03-31 | 2008-03-31 |  | 20.33d |  | start no earlier than 2008-03-31 | Tester A; Lider de Proyecto; Tester B; Diseñador A | 12h |
| 137 | 1.4.8 | Hito 5 | 1.33d? | 2008-03-07 | 2008-03-10 |  | 61.67d | 0d | start no earlier than 2008-03-07 | Lider de Proyecto | 4h |
| 138 | 1.4.9 | Seguimiento de productividad | 1d? | 2008-03-10 | 2008-03-10 | 137 | 61.67d |  |  | Lider de Proyecto [66.7%] | 2h |
| 139 | 1.5 | **Cierre** | 146d? | 2008-01-24 | 2008-04-10 |  | 0d |  |  |  | 392h |
| 140 | 1.5.1 | **Confección de Manual del Usuario** | 78.67d? | 2008-01-24 | 2008-03-06 |  | 0d |  |  |  | 180h |
| 141 | 1.5.1.1 | Modulo de Gestión de proveedores | 10d? | 2008-02-15 | 2008-02-21 |  | 0d |  | start no earlier than 2008-02-15 | Documentador A | 30h |
| 142 | 1.5.1.2 | Modulo de Gestión de clientes | 10d? | 2008-01-24 | 2008-01-30 | 129 | 55.33d | 0d |  | Documentador B | 30h |
| 143 | 1.5.1.3 | Modulo de Gestión de stock | 13.33d? | 2008-02-21 | 2008-02-28 | 141 | 0d |  |  | Documentador A | 40h |
| 144 | 1.5.1.4 | Modulo de Gestión de productos | 13.33d? | 2008-01-30 | 2008-02-06 | 142 | 55.33d |  |  | Documentador B | 40h |
| 145 | 1.5.1.5 | Modulo de Gestión de pedidos | 13.33d? | 2008-02-28 | 2008-03-06 | 143 | 0d |  |  | Documentador A | 40h |
| 146 | 1.5.2 | Revisión de Manual Usuario | 3.33d? | 2008-03-06 | 2008-03-07 | 140 | 64d |  |  | Responsable de Validaciones | 10h |
| 147 | 1.5.3 | Confección de Manual de Operaciones | 26.67d? | 2008-03-06 | 2008-03-20 | 140 | 0d |  |  | Programador A | 80h |
| 148 | 1.5.4 | Revisión Manual Operaciones | 6.67d? | 2008-03-20 | 2008-03-24 | 147 | 0d |  |  | Responsable de Validaciones | 20h |
| 149 | 1.5.5 | Aprobacion de Manuales | 1.33d? | 2008-03-24 | 2008-03-25 | 148 | 0d |  |  | Lider de Proyecto | 4h |
| 150 | 1.5.6 | Confección de Documentación Presentación Final | 26.67d? | 2008-03-25 | 2008-04-08 | 140, 149 | 0d |  |  | Analista A | 80h |
| 151 | 1.5.7 | Revisión de Documentación Presentacion Final | 3.33d? | 2008-04-08 | 2008-04-09 | 150 | 0d |  |  | Responsable de Validaciones | 10h |
| 152 | 1.5.8 | Aprobacion Documentación Final | 1.33d? | 2008-04-09 | 2008-04-10 | 151 | 0d |  |  | Lider de Proyecto | 4h |
| 153 | 1.5.9 | Hito 6 | 1.33d? | 2008-04-10 | 2008-04-10 | 152 | 0d |  |  | Lider de Proyecto | 4h |
